# Hopley Project Plan REVISED 03.10.2025

Schedule from MS Project, 2025-10-24 to 2026-01-16, A marks actual dates.

## Calendars

- Standard: Mon-Sat 08:00-12:00, 13:00-17:00; Sun off.

## Schedule

| ID | WBS | Task | Type | Duration | Start | Finish | Predecessors | Complete | Remaining | Baseline start | Baseline finish | Baseline duration | Total slack | Free slack | unit | qty |
| --- | --- | --- | --- | --- | --- | --- | --- | --- | --- | --- | --- | --- | --- | --- | --- | --- |
| 1 | 1 | **Hopley Retail station** |  | 73d | 2025-10-24 A | 2026-01-16 |  | 55% | 32.72d | 2025-10-10 | 2025-12-06 | 50d | 0d |  |  |  |
| 2 | 1.1 | Mobilization |  | 1d | 2025-10-24 A | 2025-10-24 A |  | 100% |  | 2025-10-10 | 2025-10-17 | 7d |  |  |  |  |
| 3 | 1.2 | Procurement of materials |  | 1d | 2025-10-28 A | 2025-10-28 A |  | 100% |  | 2025-10-10 | 2025-10-21 | 10d |  |  |  |  |
| 4 | 1.3 | **Plot Development** |  | 46d | 2025-10-28 A | 2025-12-19 |  |  | 46d | 2025-10-22 | 2025-11-14 | 21d | 24d |  |  |  |
| 5 | 1.3.1 | Excavation | milestone | 0d | 2025-10-28 A | 2025-11-03 A | 3 | 100% |  | 2025-10-22 | 2025-10-25 | 4d |  |  | CUM | 631 |
| 6 | 1.3.2 | Backfilling |  | 2d | 2025-12-06 A | 2025-12-08 | 5 |  | 2d | 2025-10-27 | 2025-10-28 | 2d | 0d |  | CUM | 1,300 |
| 7 | 1.3.3 | PCC Work |  | 2d | 2025-12-09 | 2025-12-10 | 6 |  |  | 2025-10-29 | 2025-10-30 | 2d | 0d |  | CUM | 315.7 |
| 8 | 1.3.4 | Paver Work |  | 4d | 2025-12-11 | 2025-12-15 | 7 |  |  | 2025-10-31 | 2025-11-04 | 4d | 0d |  | SQM | 3,157 |
| 9 | 1.3.5 | Driveway GSB Filling |  | 2d | 2025-12-11 A | 2025-12-17 | 8 |  | 2d | 2025-11-05 | 2025-11-06 | 2d | 24d | 0d | CUM | 1,307 |
| 10 | 1.3.6 | Driveway Boarder Paver |  | 2d | 2025-12-18 | 2025-12-19 | 9 |  |  | 2025-11-07 | 2025-11-08 | 2d | 24d |  | RM | 61 |
| 11 | 1.3.7 | Light Pole Foundation | milestone | 0d | 2025-10-28 A | 2025-12-10 A | 10 | 100% |  | 2025-11-10 | 2025-11-12 | 3d |  |  | Nos | 11 |
| 12 | 1.3.8 | Light Pole Installation |  | 2d | 2025-12-17 A | 2025-12-18 | 11 |  | 2d | 2025-11-13 | 2025-11-14 | 2d | 25d |  | Nos | 11 |
| 13 | 1.4 | **Canopy 8 x 16 m** |  | 56d | 2025-10-28 A | 2025-12-31 |  | 67% | 18.67d | 2025-10-22 | 2025-11-12 | 19d | 12d | 0d |  |  |
| 14 | 1.4.1 | Setting Out |  | 2d | 2025-10-28 A | 2025-10-29 A | 5SS | 100% |  | 2025-10-22 | 2025-10-23 | 2d |  |  |  |  |
| 15 | 1.4.2 | Excavation | milestone | 0d | 2025-10-28 A | 2025-10-29 A | 14 | 100% |  | 2025-10-24 | 2025-10-24 | 1d |  |  | CUM | 33.2 |
| 16 | 1.4.3 | Foundation | milestone | 0d | 2025-10-28 A | 2025-10-29 A | 15 | 100% |  | 2025-10-25 | 2025-10-28 | 3d |  |  | CUM | 13 |
| 17 | 1.4.4 | Backfilling |  | 3d | 2025-11-15 A | 2025-11-18 A | 15 | 100% |  | 2025-10-25 | 2025-10-25 | 1d |  |  | CUM | 20.2 |
| 18 | 1.4.5 | Spoon Drain Work |  | 2d | 2025-12-15 A | 2025-12-16 | 15 |  | 2d | 2025-10-25 | 2025-10-27 | 2d | 0d |  | RM | 48 |
| 19 | 1.4.6 | Forcourt Slab |  | 2d | 2025-12-11 A | 2025-12-18 | 18 |  | 2d | 2025-10-28 | 2025-10-29 | 2d | 9d |  | SQM | 128 |
| 20 | 1.4.7 | Dispenser |  | 2d | 2025-12-30 A | 2025-12-31 | 19 |  | 2d | 2025-10-30 | 2025-10-31 | 2d | 12d | 0d | Nos |  |
| 21 | 1.4.8 | Structure Column Erection | milestone | 0d | 2025-11-15 A | 2025-11-18 A | 20 | 100% |  | 2025-11-01 | 2025-11-01 | 1d |  |  | Nos |  |
| 22 | 1.4.9 | Structure Roof Beam |  | 7d | 2025-11-18 A | 2025-11-26 A | 21 | 100% |  | 2025-11-03 | 2025-11-04 | 2d |  |  | SQM | 128 |
| 23 | 1.4.10 | Structure Roofing |  | 6d | 2025-11-24 A | 2025-12-03 A | 22 | 100% |  | 2025-11-05 | 2025-11-06 | 2d |  |  | SQM | 128 |
| 24 | 1.4.11 | Structure Painting |  | 2d | 2025-12-04 | 2025-12-05 | 23 |  |  | 2025-11-07 | 2025-11-08 | 2d | 21d | 0d | SQM | 280 |
| 25 | 1.4.12 | Roof Drainage | milestone | 0d | 2025-11-27 A | 2025-11-28 A | 24 | 100% |  | 2025-11-10 | 2025-11-11 | 2d |  |  | RM | 30 |
| 26 | 1.4.13 | Forecourt Painting |  | 1d | 2025-11-29 | 2025-11-29 | 25 |  |  | 2025-11-12 | 2025-11-12 | 1d | 31d | 1d | SQM |  |

| ID | WBS | Task | Type | Duration | Start | Finish | Predecessors | Complete | Remaining | Baseline start | Baseline finish | Baseline duration | Total slack | unit | qty |
| --- | --- | --- | --- | --- | --- | --- | --- | --- | --- | --- | --- | --- | --- | --- | --- |
| 27 | 1.5 | **M1 Module & Retail Shops** |  | 61d | 2025-10-28 A | 2026-01-06 |  | 60% | 24.4d | 2025-10-22 | 2025-11-17 | 23d | 9d |  |  |
| 28 | 1.5.1 | Setting Out |  | 2d | 2025-10-28 A | 2025-10-29 A | 5SS | 100% |  | 2025-10-22 | 2025-10-23 | 2d |  |  |  |
| 29 | 1.5.2 | Excavation |  | 2d | 2025-10-28 A | 2025-10-29 A | 6 | 100% |  | 2025-10-29 | 2025-10-30 | 2d |  | CUM | 162 |
| 30 | 1.5.3 | Foundation |  | 2d | 2025-10-28 A | 2025-10-29 A | 7 | 100% |  | 2025-10-31 | 2025-11-04 | 4d |  | CUM | 138 |
| 31 | 1.5.4 | Backfilling | milestone | 0d | 2025-11-14 A | 2025-11-20 A | 8 | 100% |  | 2025-11-05 | 2025-11-05 | 1d |  | Cum | 24 |
| 32 | 1.5.5 | Brickwork Substructure | milestone | 0d | 2025-11-06 A | 2025-11-19 A | 9 | 100% |  | 2025-11-07 | 2025-11-10 | 3d |  | CUM | 24 |
| 33 | 1.5.6 | Structure Column Erection | milestone | 0d | 2025-11-14 A | 2025-11-19 A | 10 | 100% |  | 2025-11-10 | 2025-11-12 | 3d |  | Nos | 16 |
| 34 | 1.5.7 | Structure Roof Beam | milestone | 0d | 2025-11-15 A | 2025-11-19 A | 11 | 100% |  | 2025-11-13 | 2025-11-14 | 2d |  | SQM | 454.08 |
| 35 | 1.5.8 | Structure Roofing | milestone | 0d | 2025-11-23 A | 2025-11-26 A | 12 | 100% |  | 2025-11-15 | 2025-11-17 | 2d |  | SQM | 454.08 |
| 36 | 1.5.9 | Structure Painting |  | 2d | 2026-01-01 | 2026-01-02 | 13 |  |  | 2025-11-13 | 2025-11-14 | 2d | 12d | SQM | 20 |
| 37 | 1.5.10 | Brickwork superstructure |  | 16d | 2025-12-05 A | 2025-12-23 A | 14 | 100% |  | 2025-10-24 | 2025-10-28 | 4d |  | CUM | 99.5 |
| 38 | 1.5.11 | Concealed Plumbing Work |  | 1d | 2026-01-03 A | 2026-01-03 | 15 |  | 1d | 2025-10-25 | 2025-10-25 | 1d | 11d | RM | 30 |
| 39 | 1.5.12 | Concealed Electrical Work |  | 11d | 2025-12-17 A | 2025-12-29 A | 16 | 100% |  | 2025-10-29 | 2025-10-29 | 1d |  | RM | 90 |
| 40 | 1.5.13 | Plastering |  | 2d | 2025-12-20 A | 2025-12-22 | 17 |  | 2d | 2025-10-27 | 2025-10-28 | 2d | 22d | SQM | 900 |
| 41 | 1.5.14 | Flooring Work |  | 2d | 2026-01-02 A | 2026-01-03 | 18 |  | 2d | 2025-10-28 | 2025-10-29 | 2d | 11d | SQM | 454 |
| 42 | 1.5.15 | False Ceiling Work |  | 2d | 2026-01-03 A | 2026-01-05 | 19 |  | 2d | 2025-10-30 | 2025-10-31 | 2d | 10d | SQM | 450 |
| 43 | 1.5.16 | External Painting |  | 2d | 2026-01-01 | 2026-01-02 | 20 |  |  | 2025-11-01 | 2025-11-03 | 2d | 12d | SQM | 420 |
| 44 | 1.5.17 | Internal Painting |  | 2d | 2025-11-19 | 2025-11-20 | 21 |  |  | 2025-11-03 | 2025-11-04 | 2d | 37d | SQM | 480 |
| 45 | 1.5.18 | Sanitary/Plumbing Fitting Work |  | 2d | 2025-11-27 | 2025-11-28 | 22 |  |  | 2025-11-05 | 2025-11-06 | 2d | 30d |  |  |
| 46 | 1.5.19 | Electrical Fitting Work |  | 2d | 2026-01-05 A | 2026-01-06 | 23 |  | 2d | 2025-11-07 | 2025-11-08 | 2d | 9d |  |  |
| 47 | 1.5.20 | Glass Work |  | 3d | 2026-01-03 A | 2026-01-06 | 24 |  | 3d | 2025-11-10 | 2025-11-12 | 3d | 9d | SQM | 152 |
| 48 | 1.5.21 | Branding Work |  | 2d | 2025-12-29 A | 2025-12-30 | 25 |  | 2d | 2025-11-12 | 2025-11-13 | 2d | 15d |  |  |
| 49 | 1.6 | **Tank Farm** |  | 41d | 2025-10-28 A | 2025-12-14 A |  | 100% |  | 2025-10-22 | 2025-11-12 | 19d |  |  |  |
| 50 | 1.6.1 | Setting Out |  | 2d | 2025-10-28 A | 2025-10-29 A | 5SS | 100% |  | 2025-10-22 | 2025-10-23 | 2d |  |  |  |
| 51 | 1.6.2 | Excavation | milestone | 0d | 2025-10-28 A | 2025-10-29 A | 50 | 100% |  | 2025-10-24 | 2025-10-28 | 4d |  | CUM | 400 |
| 52 | 1.6.3 | PCC Work | milestone | 0d | 2025-10-28 A | 2025-10-29 A | 51 | 100% |  | 2025-10-29 | 2025-10-29 | 1d |  | CUM | 6.6 |
| 53 | 1.6.4 | RCC Work |  | 4d | 2025-10-28 A | 2025-10-31 A | 52 | 100% |  | 2025-10-30 | 2025-10-31 | 2d |  | MT | 26.4 |
| 54 | 1.6.5 | Brickwork Sub- Structure |  | 7d | 2025-11-03 A | 2025-11-12 A | 53 | 100% |  | 2025-11-01 | 2025-11-03 | 2d |  | CUM | 27.6 |
| 55 | 1.6.6 | Tanks Installation | milestone | 0d | 2025-11-23 A | 2025-11-23 A | 54 | 100% |  | 2025-11-04 | 2025-11-06 | 3d |  | Nos |  |
| 56 | 1.6.7 | Sand Backfilling |  | 3d | 2025-11-24 A | 2025-11-26 A | 55 | 100% |  | 2025-11-07 | 2025-11-10 | 3d |  | CUM | 210 |
| 57 | 1.6.8 | Top of Farm Tank RCC |  | 15d | 2025-11-26 A | 2025-12-14 A | 56 | 100% |  | 2025-11-11 | 2025-11-12 | 2d |  | CUM | 17.6 |

| ID | WBS | Task | Type | Duration | Start | Finish | Predecessors | Complete | Remaining | Baseline start | Baseline finish | Baseline duration | Total slack | Free slack | unit | qty |
| --- | --- | --- | --- | --- | --- | --- | --- | --- | --- | --- | --- | --- | --- | --- | --- | --- |
| 58 | 1.7 | **Oil Interceptor** |  | 61d | 2025-10-28 A | 2026-01-06 |  | 86% | 8.71d | 2025-10-22 | 2025-11-03 | 11d | 9d |  |  |  |
| 59 | 1.7.1 | Setting Out |  | 2d | 2025-10-28 A | 2025-10-29 A | 5SS | 100% |  | 2025-10-22 | 2025-10-23 | 2d |  |  |  |  |
| 60 | 1.7.2 | Excavation |  | 6d | 2025-12-05 A | 2025-12-11 A | 59 | 100% |  | 2025-10-24 | 2025-10-25 | 2d |  |  | CUM | 21 |
| 61 | 1.7.3 | PCC Work |  | 1d | 2025-12-12 A | 2025-12-12 A | 60 | 100% |  | 2025-10-27 | 2025-10-27 | 1d |  |  | CUM | 0.66 |
| 62 | 1.7.4 | RCC Work | milestone | 0d | 2025-12-14 A | 2025-12-14 A | 61 | 100% |  | 2025-10-28 | 2025-10-28 | 1d |  |  | CUM | 1.32 |
| 63 | 1.7.5 | Brickwork Substructure |  | 3d | 2025-12-13 A | 2025-12-16 A | 62 | 100% |  | 2025-10-29 | 2025-10-30 | 2d |  |  | CUM | 9.22 |
| 64 | 1.7.6 | RCC Slab |  | 2d | 2026-01-05 A | 2026-01-06 | 63 |  | 2d | 2025-10-31 | 2025-11-01 | 2d | 9d |  | CUM | 0.82 |
| 65 | 1.7.7 | Manhole Covering | milestone | 0d | 2026-01-05 A | 2026-01-05 A | 64 | 100% |  | 2025-11-03 | 2025-11-03 | 1d |  |  | Nos |  |
| 66 | 1.8 | **Installation of equipment** |  | 40d | 2025-12-02 A | 2026-01-16 |  |  | 40d | 2025-11-13 | 2025-11-24 | 10d | 0d |  |  |  |
| 67 | 1.8.1 | Mechanical Equipment installation |  | 10d | 2025-12-02 A | 2026-01-16 | 65, 57, 26 |  | 10d | 2025-11-13 | 2025-11-24 | 10d | 0d |  |  |  |
| 68 | 1.8.2 | Electrical Equipment installation |  | 10d | 2025-12-05 A | 2025-12-16 | 67SS |  | 10d | 2025-11-13 | 2025-11-24 | 10d | 16d | 0d |  |  |
| 69 | 1.9 | Misc & painting work |  | 3d | 2025-12-17 | 2025-12-19 | 68 |  |  | 2025-11-25 | 2025-11-27 | 3d | 16d | 0d |  |  |
| 70 | 1.10 | Mechanical Completion works |  | 3d | 2025-12-20 | 2025-12-23 | 69 |  |  | 2025-11-28 | 2025-12-01 | 3d | 16d | 0d |  |  |
| 71 | 1.11 | Testing & commissioning works |  | 4d | 2025-12-24 | 2025-12-27 | 70 |  |  | 2025-12-02 | 2025-12-05 | 4d | 16d | 0d |  |  |
| 72 | 1.12 | Hand over of Project |  | 1d | 2025-12-29 | 2025-12-29 | 71 |  |  | 2025-12-06 | 2025-12-06 | 1d | 16d |  |  |  |
